# caGrid-1-3

Schedule from MS Project, 2008-07-17 to 2008-11-03, A marks actual dates.
Personal

## Calendars

- Standard: Mon-Fri 08:00-12:00, 13:00-17:00; Sat-Sun off.

## Resources

| Resource |
| --- |
| Scott Oster |
| Steve Langella |
| Shannon Hastings |
| David Ervin |
| Santhosh Garmilla |
| John Eisenschmidt |
| Knowledge Center |
| Carolyn Klinger |
| Quality Assurance |
| Systems |
| Manav |
| SO/Ravi? |
| 129 |

## Schedule

| ID | WBS | Task | Type | Duration | Start | Finish | Predecessors | Complete | Remaining | Total slack | Free slack | Resources | Work |
| --- | --- | --- | --- | --- | --- | --- | --- | --- | --- | --- | --- | --- | --- |
| 1 | 1.0 | **Gold Compatibility** |  | 21d? | 2008-07-17 A | 2008-08-14 |  |  | 21d? | 56.36d |  |  | 509h |
| 2 | 1.1 | **GME Rewrite** |  | 21d? | 2008-07-17 A | 2008-08-14 |  |  | 21d? | 55.36d |  |  | 221h |
| 3 | 1.1.0 | Start | milestone | 0d | 2008-07-17 A | 2008-07-17 A |  | 100% |  |  |  | Scott Oster [50%] |  |
| 4 | 1.1.1 | MySQL 5.0 Support |  | 1d? | 2008-07-18 | 2008-07-18 | 3 |  |  | 28.36d | 19d | Scott Oster [50%] | 4h |
| 5 | 1.1.3 | Schemas with Cycles |  | 6.25d? | 2008-07-18 | 2008-07-28 | 3 |  |  | 23.11d | 13.75d | Scott Oster [50%] | 25h |
| 6 | 1.1.4 | Schemas with Includes/Redefines |  | 5d? | 2008-07-18 | 2008-07-24 | 3 |  |  | 24.36d | 15d | Scott Oster [50%] | 20h |
| 7 | 1.1.5 | URI Valid as Namespace |  | 1d? | 2008-07-18 | 2008-07-18 | 3 |  |  | 28.36d | 19d | Scott Oster [50%] | 4h |
| 8 | 1.1.6 | Metadata and WSDL reflect service operations |  | 1d? | 2008-07-18 | 2008-07-18 | 3 |  |  | 28.36d | 19d | Scott Oster [50%] | 4h |
| 9 | 1.1.7 | Update/Delete non-production schemas |  | 5d? | 2008-07-18 | 2008-07-24 | 3 |  |  | 24.36d | 15d | Scott Oster [50%] | 20h |
| 10 | 1.1.8 | Associate Arbitrarty Metadata or Annotations |  | 10d? | 2008-07-18 | 2008-07-31 | 3 |  |  | 19.36d | 10d | Scott Oster [50%] | 40h |
| 11 | 1.1.9 | Validate that XML conforms to schema in GME |  | 5d? | 2008-07-18 | 2008-07-24 | 3 |  |  | 24.36d | 15d | Scott Oster [50%] | 20h |
| 12 | 1.1.10 | GME has issues with mutliple elements of the same name/type in a complexType |  | 1d? | 2008-07-17 | 2008-07-17 | 3 |  |  | 60d | 20d | Scott Oster [50%] | 4h |
| 13 | 1.1.11 | Non-RFE Development |  | 20d | 2008-07-18 | 2008-08-14 | 3 |  |  | 40d | 0d | Scott Oster [50%] | 80h |
| 14 | 1.1.12 | Finish | milestone | 0d | 2008-08-14 | 2008-08-14 | 4, 5, 6, 7, 8, 9, 10, 11, 13, 12 |  |  | 40d | 0d | Scott Oster [50%] |  |
| 15 | 1.2 | **caDSR Grid Service Replacement** |  | 21d? | 2008-07-17 | 2008-08-14 |  |  |  | 55.36d |  |  | 140h |
| 16 | 1.2.1 | Start | milestone | 0d | 2008-07-17 | 2008-07-17 |  |  |  | 55.36d | 0d | Scott Oster [50%] |  |
| 17 | 1.2.2 | Design |  | 5d? | 2008-07-18 | 2008-07-24 | 16 |  |  | 70.36d | 15d | Scott Oster [50%] | 20h |
| 18 | 1.2.3 | Development |  | 20d? | 2008-07-18 | 2008-08-14 | 16 |  |  | 55.36d | 0d | Scott Oster [50%] | 80h |
| 19 | 1.2.4 | Migration of code depenedencies on caDSR grid service (Introduce extensions) |  | 5d? | 2008-07-18 | 2008-07-24 | 16 |  |  | 70.36d | 15d | Scott Oster [50%] | 20h |
| 20 | 1.2.4 | Developer Testing |  | 5d? | 2008-07-18 | 2008-07-24 | 16 |  |  | 70.36d | 15d | Scott Oster [50%] | 20h |
| 21 | 1.2.5 | Finish | milestone | 0d | 2008-08-14 | 2008-08-14 | 17, 18, 20, 19 |  |  | 55.36d | 0d | Scott Oster [50%] |  |
| 22 | 1.3 | **Make Core Services Gold Compatible** |  | 5d? | 2008-07-17 | 2008-07-23 |  |  |  | 72.36d |  |  | 148h |
| 23 | 1.3.1 | Start | milestone | 0d | 2008-07-17 | 2008-07-17 |  |  |  | 57d | 0d |  |  |
| 24 | 1.3.2 | Identify Services to be made Gold Compatible |  | 1d? | 2008-07-18 | 2008-07-18 | 23 |  |  | 60d | 3d | Scott Oster [50%] | 4h |

Notes:
- 19: This creates a backwards incompatibility for existing Introduce installations which would expect to be able to communicate with the existing caDSR grid service; we should leave this instance running, and deprecate it (if ncessary, we can create new versions of these extensions for past releases of Introduce if necessary.
- 22: caGrid 1.3 should focus on non-backwards compatibility issues (not refactoring service interfaces); I will create a detailed wbs for this sepecifically

| ID | WBS | Task | Type | Duration | Start | Finish | Predecessors | Complete | Remaining | Total slack | Free slack | Constraint | Resources | Work | Actual work |
| --- | --- | --- | --- | --- | --- | --- | --- | --- | --- | --- | --- | --- | --- | --- | --- |
| 25 | 1.3.3 | **Register Object and Metadata Models** |  | 5d | 2008-07-17 | 2008-07-23 |  |  |  | 72.36d |  |  | John Eisenschmidt | 144h |  |
| 26 | 1.3.3.1 | Start | milestone | 0d | 2008-07-17 | 2008-07-17 | 23 |  |  | 72.36d | 0d |  | John Eisenschmidt |  |  |
| 27 | 1.3.3.2 | CQL |  | 5d | 2008-07-17 | 2008-07-23 | 26 |  |  | 72.36d | 0d |  | John Eisenschmidt | 40h |  |
| 28 | 1.3.3.3 | CQL Results |  | 2d | 2008-07-17 | 2008-07-18 | 26 |  |  | 75.36d | 3d |  | John Eisenschmidt | 16h |  |
| 29 | 1.3.3.4 | Service Metadata |  | 2d | 2008-07-17 | 2008-07-18 | 26 |  |  | 75.36d | 3d |  | John Eisenschmidt | 16h |  |
| 30 | 1.3.3.5 | Security Metadata |  | 2d | 2008-07-17 | 2008-07-18 | 26 |  |  | 75.36d | 3d |  | John Eisenschmidt | 16h |  |
| 31 | 1.3.3.6 | Data Services Object Model |  | 2d | 2008-07-17 | 2008-07-18 | 26 |  |  | 75.36d | 3d |  | John Eisenschmidt | 16h |  |
| 32 | 1.3.3.7 | Finish | milestone | 0d | 2008-07-23 | 2008-07-23 | 27, 28, 29, 30, 31 |  |  | 72.36d | 0d |  | John Eisenschmidt |  |  |
| 33 | 1.3.4 | Finish | milestone | 0d | 2008-07-23 | 2008-07-23 | 24, 32 |  |  | 57d |  |  |  |  |  |
| 34 | 2.0 | **caCORE Integration** |  | 15d | 2008-07-17 A | 2008-08-06 |  |  | 15d | 62.36d |  |  |  | 492h |  |
| 35 | 2.1 | Start | milestone | 0d | 2008-07-17 A | 2008-07-17 A |  | 100% |  |  |  |  |  |  |  |
| 36 | 2.2 | Implementation of Common Testing between Grid and SDK |  | 15d | 2008-07-17 | 2008-08-06 | 35 |  |  | 47d | 0d |  | David Ervin | 120h |  |
| 37 | 2.3 | Identify modeling gaps/requirements for the analytical/data service |  | 10d | 2008-07-17 | 2008-07-30 | 35 |  |  | 52d | 5d |  | David Ervin | 80h |  |
| 38 | 2.4 | CQL/CQL2 Integration in SDK |  | 15d | 2008-07-17 | 2008-08-06 | 35 |  |  | 47d | 0d |  | David Ervin | 120h |  |
| 39 | 2.5 | Data Service plug-in for SDK 4.1 |  | 10d | 2008-07-17 | 2008-07-30 | 35 |  |  | 52d | 5d |  | David Ervin | 80h |  |
| 40 | 2.6 | Introduce upgrade to SDK 4.1 |  | 5d | 2008-07-18 | 2008-07-24 | 35 |  |  | 56d | 9d |  | Scott Oster [50%] | 20h |  |
| 41 | 2.7 | Proxy Framework and XML serialization integration in Grid Service |  | 5d | 2008-07-17 | 2008-07-23 | 35 |  |  | 57d | 10d |  | Shannon Hastings | 40h |  |
| 42 | 2.8 | XMI Reader API Integration in Introduce |  | 5d | 2008-07-17 | 2008-07-23 | 35 |  |  | 57d | 10d |  | David Ervin [80%] | 32h |  |
| 43 | 2.9 | Finish | milestone | 0d | 2008-08-06 | 2008-08-06 | 36, 37, 38, 39, 40, 41, 42 |  |  | 47d |  |  |  |  |  |
| 44 | 3.0 | **Bug Fixes** |  | 40d? | 2008-07-17 A | 2008-09-10 |  | 30% | 27.88d? | 37.36d |  |  |  | 242.4h | 73.6h |
| 45 | 3.1 | Start | milestone | 0d | 2008-07-17 A | 2008-07-17 A |  | 100% |  |  |  |  |  |  |  |
| 46 | 3.2 | SDK 4 data service wizard fails with 'No Domain Model' |  | 1d | 2008-09-05 A | 2008-09-05 A | 45 | 100% |  |  |  | start no earlier than 2008-09-05 | David Ervin | 8h | 8h |
| 47 | 3.3 | When the trasfer resource is being destroyed it tries to delete the cache file. If the cache files does not exist it throws a resource exception. |  | 1d? | 2008-07-17 | 2008-07-17 | 45 |  |  | 61d | 39d |  | Shannon Hastings | 8h |  |
| 48 | 3.4 | 2 >= 2 error in GridGrouper my groups |  | 1d? | 2008-07-17 | 2008-07-17 | 45 |  |  | 61d | 39d |  | Steve Langella | 8h |  |
| 49 | 3.5 | Introduce is not passing any system properties on to it's ant calls it makes when running the engine. |  | 1d? | 2008-07-17 | 2008-07-17 | 45 |  |  | 61d | 39d |  | Shannon Hastings | 8h |  |
| 50 | 3.6 | caDSR Grid Service API does not provide access to semantic metadata (concept codes) |  | 2d? | 2008-07-18 | 2008-07-21 | 45 |  |  | 59d | 37d |  | Scott Oster [50%] | 8h |  |
| 51 | 3.7 | Security Service Metadata Anonymous Clients Ignored in Grid Grouper |  | 1d? | 2008-07-17 | 2008-07-17 | 45 |  |  | 61d | 39d |  | Steve Langella | 8h |  |
| 52 | 3.8 | caCORE backed data services don't handle queries with single quotes in query parameters |  | 1d? | 2008-07-17 A | 2008-07-17 A | 45 | 100% |  |  |  |  | David Ervin | 8h | 8h |
| 53 | 3.9 | caDSR Type Browser doesn't let you correct a namespace that is invalid (as opposed to not found) |  | 4d? | 2008-07-18 | 2008-07-23 | 45 |  |  | 57d | 35d |  | Scott Oster [50%] | 16h |  |
| 54 | 3.10 | DataService gets in inconsistent state and returns confusing errors when not properly initialized |  | 1d? | 2008-07-17 | 2008-07-17 | 45 |  |  | 61d | 39d |  | David Ervin | 8h |  |
| 55 | 3.11 | Grid Grouper Authorization not configured but service can be deployed |  | 1d? | 2008-07-17 | 2008-07-17 | 45 |  |  | 61d | 39d |  | Steve Langella | 8h |  |
| 56 | 3.12 | Introduce error importing Type schemas it generated. |  | 1d? | 2008-09-04 A | 2008-09-04 A | 45 | 100% |  |  |  | finish no earlier than 2008-09-04 | Shannon Hastings | 8h | 8h |
| 57 | 3.13 | GTS does not remove permissions when a CA is deleted. |  | 1d? | 2008-07-17 | 2008-07-17 | 45 |  |  | 61d | 39d |  | Steve Langella | 8h |  |
| 58 | 3.14 | Spaces in GLOBUS_LOCATION causing errors on deployment for Introduce created services |  | 1d? | 2008-07-17 | 2008-07-17 | 45 |  |  | 61d | 39d |  | Shannon Hastings | 8h |  |
| 59 | 3.15 | When importing a method from another introduce service package names are broken |  | 1d | 2008-09-04 A | 2008-09-04 A | 45 | 100% |  |  |  |  | Shannon Hastings | 8h | 8h |
| 60 | 3.16 | SyncGTS is an Introduce 1.1 service will conflict with a container running newer services. |  | 1d? | 2008-07-17 | 2008-07-17 | 45 |  |  | 61d | 39d |  | Steve Langella | 8h |  |
| 61 | 3.17 | Lowercase chars in complexType names from schema can cause compile failure |  | 1d? | 2008-07-17 | 2008-07-17 | 45 |  |  | 61d | 39d |  | John Eisenschmidt | 8h |  |
| 62 | 3.18 | caGrid authentication service authentications fail after change of password on NCI LDAP |  | 1d? | 2008-07-17 A | 2008-07-17 A | 45 | 100% |  |  |  |  | Steve Langella | 8h | 8h |
| 63 | 3.19 | SyncGTS is using log4j directly instead of commons logging which causes some logging statements to not be shown in Tomcat |  | 1d? | 2008-07-17 | 2008-07-17 | 45 |  |  | 61d | 39d |  | Steve Langella | 8h |  |
| 64 | 3.20 | Remove references to log4j in projects and only use commons logging |  | 2d? | 2008-07-17 | 2008-07-18 | 45 |  |  | 60d | 38d |  | Steve Langella; Scott Oster [50%]; Shannon Hastings; David Ervin | 28h |  |
| 65 | 3.21 | Multiple services using WS-Enumeration cannot run in same container |  | 1d? | 2008-07-17 | 2008-07-17 | 45 |  |  | 61d | 39d |  | David Ervin [80%] | 6.4h |  |
| 66 | 3.22 | Introduce configure types validator lets you save when there are validation errors |  | 1d | 2008-09-04 A | 2008-09-04 A | 45 | 100% |  |  |  |  | Shannon Hastings | 8h | 8h |
| 67 | 3.23 | Subject in Dorian limited to 255 characters |  | 1d? | 2008-07-17 | 2008-07-17 | 45 |  |  | 61d | 39d |  | Steve Langella | 8h |  |
| 68 | 3.24 | Introduce Log Viewer hangs in certain scenarios |  | 1d? | 2008-07-17 | 2008-07-17 | 45 |  |  | 61d | 39d |  | Shannon Hastings | 8h |  |
| 69 | 3.25 | Gaards UI throws an error popup that makes the UI unusable |  | 1d? | 2008-07-18 | 2008-07-18 | 45 |  |  | 60d | 38d |  | Steve Langella [80%] | 6.4h |  |
| 70 | 3.26 | SDK 4 Data Service wizard can blank copied schema files |  | 1d | 2008-09-04 A | 2008-09-04 A | 45 | 100% |  |  |  | finish no earlier than 2008-09-04 | David Ervin [80%] | 6.4h | 6.4h |
| 71 | 3.27 | A deployed service in a different context (not caGrid) cannot create TransferServiceContext |  | 1d | 2008-07-17 A | 2008-07-17 A | 45 | 100% |  |  |  |  | Shannon Hastings [80%] | 6.4h | 6.4h |
| 72 | 3.28 | Pasting values in to fields on SDK 4 wizard configuration causes exception |  | 1d | 2008-09-08 A | 2008-09-08 A | 45 | 100% |  |  |  | start no earlier than 2008-09-08 | David Ervin [80%] | 6.4h | 6.4h |
| 73 | 3.29 | Introduce service security metadata is not consistent with security descriptor for resource property operations |  | 1d | 2008-09-10 A | 2008-09-10 A | 45 | 100% |  |  |  | start no earlier than 2008-09-10 | Shannon Hastings [80%] | 6.4h | 6.4h |
| 74 | 3.30 | Finish | milestone | 0d | 2008-09-10 | 2008-09-10 | 46, 47, 48, 49, 50, 51, 52, 53, 54, 55, 56, 57, 58, 59, 60, 61, 62, 63, 64, 65, 66, 67, 68, 69, 70, 71, 73, 72 |  |  | 22d |  |  |  |  |  |

Notes:
- 41: This is a low priority and we might want to bump it
- 50: This is really a "missing feature" and should/would be satisfied be the new caDSR grid service / This is already referenced above in 1.2.2, just pointing it out explicitly.
- 52: I updated the tracker; this is a limitation which can't be fixed for caCORE SDK 3.1 and 3.2(.1), but was addressed in caGrid 1.2 when adding support for caCORE SDK 4.0. Should we close the bug?
- 56: Won't Fix
- 61: This is something we can't fix; should we close the bug?
- 71: Won't Fix

| ID | WBS | Task | Type | Duration | Start | Finish | Predecessors | Complete | Remaining | Total slack | Free slack | Resources | Work | Actual work |
| --- | --- | --- | --- | --- | --- | --- | --- | --- | --- | --- | --- | --- | --- | --- |
| 75 | 4.0 | **WebSSO** |  | 2d? | 2008-07-17 A | 2008-07-18 |  | 67% | 0.67d? | 74.36d |  |  | 48h | 32h |
| 76 | 4.1 | Start | milestone | 0d | 2008-07-17 A | 2008-07-17 A |  | 100% |  |  |  |  |  |  |
| 77 | 4.2 | Properties not set for service redirect/cookie age within the cas-servlet.xml file |  | 1d? | 2008-07-17 A | 2008-07-17 A | 76 | 100% |  |  |  | Santhosh Garmilla [50%] | 4h | 4h |
| 78 | 4.3 | CaGridWebSSOAttributeLoaderFilter will not work as designed |  | 1d? | 2008-07-17 A | 2008-07-17 A | 76 | 100% |  |  |  | Santhosh Garmilla [50%] | 4h | 4h |
| 79 | 4.4 | WebSSO project is missing jar dependencies for syncGTS |  | 1d? | 2008-07-17 A | 2008-07-17 A | 76 | 100% |  |  |  | Santhosh Garmilla [50%] | 4h | 4h |
| 80 | 4.5 | classnotfoundexception when deploying to tomcat 5.5+ |  | 1d? | 2008-07-17 A | 2008-07-17 A | 76 | 100% |  |  |  | Santhosh Garmilla [50%] | 4h | 4h |
| 81 | 4.6 | Update Build Process |  | 1d? | 2008-07-18 A | 2008-07-18 A | 76 | 100% |  |  |  | Santhosh Garmilla [50%] | 4h | 4h |
| 82 | 4.7 | Update the Sample Application |  | 1d? | 2008-07-17 A | 2008-07-17 A | 76 | 100% |  |  |  | Santhosh Garmilla [50%] | 4h | 4h |
| 83 | 4.8 | Create an Installer |  | 1d? | 2008-07-17 | 2008-07-17 | 76 |  |  | 60d | 1d | Santhosh Garmilla [50%] | 4h |  |
| 84 | 4.9 | Author System Tests for WebSSO |  | 1d? | 2008-07-17 | 2008-07-17 | 76 |  |  | 60d | 1d | Santhosh Garmilla [50%] | 4h |  |
| 85 | 4.10 | Acegi client |  | 1d? | 2008-07-17 A | 2008-07-17 A | 76 | 100% |  |  |  | Santhosh Garmilla [50%] | 4h | 4h |
| 86 | 4.11 | Single sign-out |  | 1d? | 2008-07-17 A | 2008-07-17 A | 76 | 100% |  |  |  | Santhosh Garmilla [50%] | 4h | 4h |
| 87 | 4.12 | Support out-of-box integration with Liferay (caGrid Portal 2.x) |  | 1d? | 2008-07-17 | 2008-07-17 | 76 |  |  | 60d | 1d | Santhosh Garmilla [50%] | 4h |  |
| 88 | 4.13 | Enhance existing documentation |  | 1d? | 2008-07-17 | 2008-07-17 | 76 |  |  | 60d | 1d | Santhosh Garmilla [50%] | 4h |  |
| 89 | 4.14 | Finish | milestone | 0d | 2008-07-18 | 2008-07-18 | 78, 79, 80, 81, 82, 83, 84, 85, 86, 87, 88, 77 |  |  | 59d | 0d |  |  |  |
| 90 | 5.0 | **Continuous Innovation** |  | 6d? | 2008-07-17 A | 2008-07-24 |  |  | 6d? | 71.36d |  |  | 68h |  |
| 91 | 5.1 | Start | milestone | 0d | 2008-07-17 A | 2008-07-17 A |  | 100% |  |  |  |  |  |  |
| 92 | 5.3 | Support common technology stack for caGrid infrastructure |  | 1d? | 2008-07-17 | 2008-07-17 | 91 |  |  | 61d | 1d | Knowledge Center | 8h |  |
| 93 | 5.3 | **Update installer** |  | 6d? | 2008-07-17 | 2008-07-24 |  |  |  | 71.36d |  |  | 40h |  |
| 94 | 5.3.1 | integrate latest portal release |  | 2d? | 2008-07-17 | 2008-07-18 |  |  |  | 60d |  | Manav | 16h |  |
| 95 | 5.3.2 | integrate WF client release? |  | 0.5d? | 2008-07-17 | 2008-07-17 |  |  |  | 61.5d |  | SO/Ravi? | 4h |  |
| 96 | 5.3.3 | updates for tech stack (tomcat versions, etc) |  | 5d? | 2008-07-18 | 2008-07-24 |  |  |  | 56d |  | Scott Oster [50%] | 20h |  |
| 97 | 5.4 | Replace cvs with subversion | milestone | 0d? | 2008-07-17 | 2008-07-17 | 91 |  |  | 61d | 0d | Knowledge Center |  |  |
| 98 | 5.5 | Common caBIG Ivy Repository |  | 2d? | 2008-07-17 | 2008-07-18 | 91 |  |  | 60d | 0d | Knowledge Center; Scott Oster [50%] | 12h |  |
| 99 | 5.6 | Remove old EVS grid service |  | 1d? | 2008-07-18 | 2008-07-18 | 91 |  |  | 60d | 0d | Scott Oster [50%] | 4h |  |
| 100 | 5.7 | Remove old caDSR grid service |  | 1d? | 2008-07-18 | 2008-07-18 | 91 |  |  | 60d | 0d | Scott Oster [50%] | 4h |  |
| 101 | 5.8 | Finish | milestone | 0d | 2008-07-18 | 2008-07-18 | 92, 97, 100, 98, 99 |  |  | 60d |  |  |  |  |

Notes:
- 83: We should discuss the scope of this.

| ID | WBS | Task | Type | Duration | Start | Finish | Predecessors | Complete | Remaining | Total slack | Free slack | Constraint | Resources | Work | Actual work |
| --- | --- | --- | --- | --- | --- | --- | --- | --- | --- | --- | --- | --- | --- | --- | --- |
| 102 | 6.0 | **Data Services** |  | 61d | 2008-07-17 A | 2008-10-09 |  | 18% | 50.3d | 15.36d |  |  |  | 364.8h | 64h |
| 103 | 6.1 | Start | milestone | 0d | 2008-07-17 A | 2008-07-17 A |  | 100% |  |  |  |  |  |  |  |
| 104 | 6.2 | CQL/CQL2 Integration in SDK |  | 15d | 2008-07-17 | 2008-08-06 | 103 |  |  | 46d |  |  | David Ervin [80%] | 96h |  |
| 105 | 6.3 | FQP should support delegation |  | 5d | 2008-07-17 | 2008-07-23 | 103 |  |  | 56d |  |  | David Ervin [80%] | 32h |  |
| 106 | 6.4 | FQP should support ws-enumeration transfer of results |  | 10d | 2008-09-26 A | 2008-10-09 A | 103 | 100% |  |  |  | finish no earlier than 2008-10-09 | David Ervin [80%] | 64h | 64h |
| 107 | 6.5 | FQP should support ws-notification |  | 5d | 2008-07-17 | 2008-07-23 | 103 |  |  | 56d |  |  | David Ervin [80%] | 32h |  |
| 108 | 6.6 | DCQL fails when some target services are down |  | 5d | 2008-07-17 | 2008-07-23 | 103 |  |  | 56d |  |  | David Ervin [80%] | 32h |  |
| 109 | 6.7 | DCQL (FQP) should support query modifiers |  | 10d | 2008-07-17 | 2008-07-30 | 103 |  |  | 51d |  |  | David Ervin [80%] | 64h |  |
| 110 | 6.8 | Add additional utilities for working with query results |  | 5d | 2008-07-17 | 2008-07-23 | 103 |  |  | 56d |  |  | David Ervin [80%] | 32h |  |
| 111 | 6.9 | silent exceptions (no service properties from custom query processor) when adding a custom query processor using Introduce data extension |  | 2d | 2008-07-17 | 2008-07-18 | 103 |  |  | 59d |  |  | David Ervin [80%] | 12.8h |  |
| 112 | 6.10 | Finish | milestone | 0d | 2008-10-09 | 2008-10-09 | 104, 105, 106, 107, 109, 110, 111, 108 |  |  | 15.36d | 0d |  |  |  |  |
| 113 | 7.0 | **Introduce** |  | 67d? | 2008-07-17 A | 2008-10-17 |  | 44% | 37.69d? | 9.36d |  |  |  | 602.4h | 256.8h |
| 114 | 7.1 | Start | milestone | 0d | 2008-07-17 A | 2008-07-17 A |  | 100% |  |  |  |  |  |  |  |
| 115 | 7.2 | Refactor Introduce Security |  | 10d | 2008-07-17 A | 2008-07-30 A | 114 | 100% |  |  |  |  | Shannon Hastings [80%] | 64h | 64h |
| 116 | 7.3 | Grid Grouper Introduce Authorization Extension |  | 10d | 2008-07-31 | 2008-08-13 | 114, 115 |  |  | 30.64d | 21d |  | Shannon Hastings [80%] | 64h |  |
| 117 | 7.4 | CSM Introduce Authorization Extension |  | 10d | 2008-07-31 | 2008-08-13 | 114, 115 |  |  | 30.64d | 21d |  | Shannon Hastings [80%] | 64h |  |
| 118 | 7.5 | ivy support for introduce-created projects |  | 10d | 2008-07-17 | 2008-07-30 | 114 |  |  | 40.64d | 31d |  | Shannon Hastings [80%] | 64h |  |
| 119 | 7.6 | Need a way to hook in pre-deployment validation checks to enforce policy |  | 10d | 2008-07-17 | 2008-07-30 | 114 |  |  | 40.64d | 31d |  | Shannon Hastings [80%] | 64h |  |
| 120 | 7.7 | Change the way schemas are loaded and resolved by introduce. |  | 1d? | 2008-07-17 | 2008-07-17 | 114 |  |  | 49.64d | 40d |  | Shannon Hastings [80%] | 6.4h |  |
| 121 | 7.8 | Introduce extension for creating cagrid core services |  | 1d? | 2008-07-17 | 2008-07-17 | 114 |  |  | 49.64d | 40d |  | Shannon Hastings [80%] | 6.4h |  |
| 122 | 7.9 | Introduce Software Update needs re-engineered |  | 1d? | 2008-07-17 | 2008-07-17 | 114 |  |  | 49.64d | 40d |  | Shannon Hastings [80%] | 6.4h |  |
| 123 | 7.10 | Improve Introduce usability when adding extensions or service contexts |  | 4d | 2008-07-17 | 2008-07-22 | 114 |  |  | 46.64d | 37d |  | Shannon Hastings [80%] | 25.6h |  |
| 124 | 7.11 | Introduce services which support persistence are hard to customize persistence on the resource itself |  | 10d | 2008-09-26 A | 2008-10-09 A | 114 | 100% |  |  |  | start no earlier than 2008-09-26 | Shannon Hastings [80%] | 64h | 64h |
| 125 | 7.12 | Introduce client code should be more override friendly |  | 10d | 2008-09-16 A | 2008-09-29 A | 114 | 100% |  |  |  |  | Shannon Hastings [80%] | 64h | 64h |
| 126 | 7.13 | Introduce clients do not set user credential when returning client handle to stateful resources |  | 5d | 2008-09-05 A | 2008-09-11 A | 114 | 100% |  |  |  |  | Shannon Hastings [80%] | 32h | 32h |
| 127 | 7.14 | Introduce Service tab should use tooltips in the jtree |  | 5d | 2008-07-17 | 2008-07-23 | 114 |  |  | 45.64d | 36d |  | Shannon Hastings [80%] | 32h |  |
| 128 | 7.15 | Problem with Anonymous Security Setting |  | 1d? | 2008-09-15 A | 2008-09-15 A | 114 | 100% |  |  |  |  | Shannon Hastings [80%] | 6.4h | 6.4h |
| 129 | 7.16 | Review Advertisement settings |  | 5d? | 2008-09-21 A | 2008-09-26 A | 114 | 100% |  |  |  | finish no earlier than 2008-09-15 | Scott Oster [50%] | 20h | 20h |
| 130 | 7.17 | ServiceConstants file shouldn't get completely re-written every save |  | 1d | 2008-10-16 A | 2008-10-16 A | 114 | 100% |  |  |  | start no earlier than 2008-10-16 | Shannon Hastings [80%] | 6.4h | 6.4h |
| 131 | 7.18 | Introduce Feature Freeze (milestone) | milestone | 0d | 2008-10-16 | 2008-10-16 | 115, 116, 117, 118, 119, 120, 121, 122, 123, 124, 125, 126, 127, 128, 130, 129 |  |  | 0d |  |  | Shannon Hastings [80%] |  |  |
| 132 | 7.19 | Introduce Upgraders (1.1->1.3) |  | 1d? | 2008-10-17 | 2008-10-17 | 131 |  |  | 9.36d | 0d |  | Shannon Hastings [80%] | 6.4h |  |
| 133 | 7.20 | Introduce Upgraders (1.2->1.3) |  | 1d? | 2008-10-17 | 2008-10-17 | 131 |  |  | 9.36d | 0d |  | Shannon Hastings [80%] | 6.4h |  |
| 134 | 7.21 | Finish | milestone | 0d | 2008-10-17 | 2008-10-17 | 132, 133 |  |  | 9.36d | 0d |  |  |  |  |

Notes:
- 109: We should hold off on this until CQL2 (and therefore DCQL2) are rolled out, as this requires a language change and would affect backwards compatibility
- 118: This is of limitied utility without 5.5; which likely won't be done in 1.3 timeline

| ID | WBS | Task | Type | Duration | Start | Finish | Predecessors | Complete | Remaining | Total slack | Free slack | Constraint | Resources | Work | Actual work |
| --- | --- | --- | --- | --- | --- | --- | --- | --- | --- | --- | --- | --- | --- | --- | --- |
| 135 | 8.0 | **Security** |  | 72d | 2008-07-17 A | 2008-10-24 |  | 4% | 68.91d | 4.36d |  |  |  | 448h | 19.2h |
| 136 | 8.1 | Start | milestone | 0d | 2008-07-17 A | 2008-07-17 A |  | 100% |  |  |  |  |  |  |  |
| 137 | 8.2 | Support multiple authentication profile |  | 5d | 2008-07-18 | 2008-07-24 | 136 |  |  | 70.36d | 23d |  | Steve Langella [80%] | 32h |  |
| 138 | 8.3 | Authentication Profile Service Metadata |  | 2d | 2008-07-18 | 2008-07-21 | 136 |  |  | 73.36d | 26d |  | Steve Langella [80%] | 12.8h |  |
| 139 | 8.4 | Update GAARDS UI to leverage new Authentication Profile / Trusted IdP metadata |  | 1d | 2008-07-18 | 2008-07-18 | 136 |  |  | 74.36d | 27d |  | Steve Langella [80%] | 6.4h |  |
| 140 | 8.5 | Develop system integration tests for the Authentication Service |  | 3d | 2008-07-17 A | 2008-07-21 A | 136 | 100% |  |  |  |  | Steve Langella [80%] | 19.2h | 19.2h |
| 141 | 8.6 | Develop system integration tests for the GTS |  | 10d | 2008-07-22 | 2008-08-04 | 140 |  |  | 47.36d | 0d |  | Steve Langella [80%] | 64h |  |
| 142 | 8.7 | SyncGTS needs to use service property for sync description |  | 1d | 2008-08-05 | 2008-08-05 | 141 |  |  | 47.36d | 0d |  | Steve Langella [80%] | 6.4h |  |
| 143 | 8.8 | API to discover trusted IDs (Use case for caB2B security requirements) |  | 2d | 2008-08-06 | 2008-08-07 | 142 |  |  | 47.36d | 0d |  | Steve Langella [80%] | 12.8h |  |
| 144 | 8.9 | Service Security Client needs a way to say to always use credential |  | 1d | 2008-10-08 | 2008-10-08 | 143 |  |  | 4.36d | 0d | start no earlier than 2008-10-08 | Shannon Hastings [80%] | 6.4h |  |
| 145 | 8.10 | Spring enable Dorian |  | 3d | 2008-10-09 | 2008-10-13 | 144 |  |  | 4.36d | 0d |  | Steve Langella [80%] | 19.2h |  |
| 146 | 8.11 | Implement new Authentication Service interface |  | 5d | 2008-10-14 | 2008-10-20 | 145 |  |  | 4.36d | 0d |  | Steve Langella [80%] | 32h |  |
| 147 | 8.12 | Add Authentication Profile Metadata to Dorian. |  | 1d | 2008-10-21 | 2008-10-21 | 146 |  |  | 4.36d | 0d |  | Steve Langella [80%] | 6.4h |  |
| 148 | 8.13 | Extend Trusted Identity Provider information to include information regarding the IdP's Authentication Service |  | 2d | 2008-10-22 | 2008-10-23 | 147 |  |  | 4.36d | 0d |  | Steve Langella [80%] | 12.8h |  |
| 149 | 8.14 | Add Trusted IdP metadata to Dorian |  | 1d | 2008-10-24 | 2008-10-24 | 148 |  |  | 4.36d | 0d |  | Steve Langella [80%] | 6.4h |  |
| 150 | 8.15 | Move from issuing Proxy Certificates to Issuing short term certificates. |  | 10d | 2008-07-18 | 2008-07-31 | 136 |  |  | 65.36d | 18d |  | Steve Langella [80%] | 64h |  |
| 151 | 8.16 | Enable Dorian Host Certificates to work with new version of IE and Firefox |  | 3d | 2008-07-18 | 2008-07-22 | 136 |  |  | 72.36d | 25d |  | Steve Langella [80%] | 19.2h |  |
| 152 | 8.17 | Add Account Audting to Dorian |  | 10d | 2008-07-18 | 2008-07-31 | 136 |  |  | 65.36d | 18d |  | Steve Langella [80%] | 64h |  |
| 153 | 8.18 | Reformat GAARDS UI to display properly on the MAC |  | 10d | 2008-07-18 | 2008-07-31 | 136 |  |  | 65.36d | 18d |  | Steve Langella [80%] | 64h |  |
| 154 | 8.19 | Finish | milestone | 0d | 2008-10-24 | 2008-10-24 | 137, 138, 139, 140, 141, 142, 143, 144, 145, 146, 147, 148, 149, 150, 151, 152, 153 |  |  | 4.36d | 0d |  |  |  |  |
| 155 | 9.0 | **Incubation** |  | 1d? | 2008-07-17 | 2008-07-17 |  |  |  | 75.36d |  |  |  | 6.4h |  |
| 156 | 9.1 | Start | milestone | 0d | 2008-07-17 | 2008-07-17 |  |  |  | 75.36d | 0d |  |  |  |  |
| 157 | 9.2 | WSRF.NET (support) |  | 1d? | 2008-07-17 | 2008-07-17 | 156 |  |  | 75.36d | 0d |  | Shannon Hastings [80%] | 6.4h |  |
| 158 | 9.0 | FInish | milestone | 0d | 2008-07-17 | 2008-07-17 | 157 |  |  | 76.36d |  |  |  |  |  |

| ID | WBS | Task | Type | Duration | Start | Finish | Predecessors | Total slack | Free slack | Resources | Work |
| --- | --- | --- | --- | --- | --- | --- | --- | --- | --- | --- | --- |
| 159 | 10.0 | **Documentation** |  | 4.64d? | 2008-07-17 | 2008-07-23 |  | 72.72d |  |  | 106.4h |
| 160 | 10.1 | Start | milestone | 0d | 2008-07-17 | 2008-07-17 |  | 72.72d | 0d |  |  |
| 161 | 10.2 | Update Administrator Guide |  | 2.5d? | 2008-07-17 | 2008-07-21 | 160 | 74.86d | 2.14d | Carolyn Klinger | 20h |
| 162 | 10.3 | Update Install Guide |  | 0.51d? | 2008-07-17 | 2008-07-18 | 160 | 76.11d | 3.38d | Carolyn Klinger; Steve Langella [80%]; Scott Oster [50%]; Shannon Hastings [80%]; David Ervin [80%] | 8h |
| 163 | 10.4 | Update User Guide |  | 1.28d? | 2008-07-17 | 2008-07-18 | 160 | 72.72d | 0d | Carolyn Klinger; David Ervin [80%]; Scott Oster [50%]; Shannon Hastings [80%]; Steve Langella [80%] | 20h |
| 164 | 10.5 | Update design documents |  | 1d? | 2008-07-18 | 2008-07-21 | 163 | 72.72d | 0d | Scott Oster [50%]; Steve Langella [80%]; Shannon Hastings [80%]; David Ervin [80%] | 23.2h |
| 165 | 10.6 | Update caGrid overview |  | 1d? | 2008-07-21 | 2008-07-22 | 164 | 72.72d | 0d | Scott Oster [50%]; John Eisenschmidt | 12h |
| 166 | 10.7 | Update wiki |  | 1d? | 2008-07-22 | 2008-07-23 | 165 | 72.72d | 0d | Scott Oster [50%]; Steve Langella [80%]; Shannon Hastings [80%]; David Ervin [80%] | 23.2h |
| 167 | 10.8 | Finish | milestone | 0d | 2008-07-23 | 2008-07-23 | 161, 162, 166 | 72.72d |  |  |  |
| 168 | 11.0 | **Quality Assurance** |  | 73d? | 2008-07-17 | 2008-10-27 |  | 4.36d |  |  | 96h |
| 169 | 11.1 | Start | milestone | 0d | 2008-07-17 | 2008-07-17 |  | 75.36d | 0d |  |  |
| 170 | 11.2 | Test GME |  | 1d? | 2008-08-15 | 2008-08-15 | 169, 14 | 55.36d |  | Quality Assurance | 8h |
| 171 | 11.3 | Test caDSR Replacement |  | 1d? | 2008-08-15 | 2008-08-15 | 169, 21 | 55.36d |  | Quality Assurance | 8h |
| 172 | 11.4 | Test WebSSO |  | 1d? | 2008-07-21 | 2008-07-21 | 169, 89 | 74.36d |  | Quality Assurance | 8h |
| 173 | 11.5 | Test release on new tech stack |  | 1d? | 2008-07-17 | 2008-07-17 | 169, 97 | 76.36d |  | Quality Assurance | 8h |
| 174 | 11.6 | Test Introduce |  | 1d? | 2008-10-20 | 2008-10-20 | 169, 134 | 9.36d |  | Quality Assurance | 8h |
| 175 | 11.7 | Test Security |  | 1d? | 2008-10-27 | 2008-10-27 | 169, 154 | 4.36d |  | Quality Assurance | 8h |
| 176 | 11.8 | Test WSRF.NET |  | 1d? | 2008-07-18 | 2008-07-18 | 169, 157 | 75.36d |  | Quality Assurance | 8h |
| 177 | 11.9 | Test Identifiers |  | 1d? | 2008-07-17 | 2008-07-17 | 169 | 76.36d |  | Quality Assurance | 8h |
| 178 | 11.10 | Test Metrics |  | 1d? | 2008-07-17 | 2008-07-17 | 169 | 76.36d |  | Quality Assurance | 8h |
| 179 | 11.11 | Test Data Services |  | 1d? | 2008-10-10 | 2008-10-10 | 169, 112 | 15.36d |  | Quality Assurance | 8h |
| 180 | 11.12 | Test caGrid 1.3 Grid Services |  | 1d? | 2008-10-17 | 2008-10-20 | 169, 192 | 8.5d | 0d | Quality Assurance | 8h |
| 181 | 11.13 | Test QA integration scenarios |  | 1d? | 2008-10-20 | 2008-10-21 | 180 | 8.5d | 0d | Quality Assurance | 8h |
| 182 | 11.14 | Finish | milestone | 0d | 2008-10-21 | 2008-10-21 | 181 | 8.5d |  | Quality Assurance |  |

| ID | WBS | Task | Type | Duration | Start | Finish | Predecessors | Total slack | Free slack | Resources | Work |
| --- | --- | --- | --- | --- | --- | --- | --- | --- | --- | --- | --- |
| 183 | 12.0 | **Deployment** |  | 77.36d? | 2008-07-17 | 2008-11-03 |  | 0d |  |  | 239.2h |
| 184 | 12.1 | Start | milestone | 0d | 2008-07-17 | 2008-07-17 |  | 65d | 0d |  |  |
| 185 | 12.2 | Create release notes |  | 1d? | 2008-07-18 | 2008-07-18 | 184 | 73.36d | 0d | Scott Oster [50%] | 4h |
| 186 | 12.3 | Create 1.3 target_grid configurations |  | 2d? | 2008-07-21 | 2008-07-22 | 185 | 73.36d |  | Scott Oster [50%] | 8h |
| 187 | 12.4 | **Create 1.3 release branch in CVS** |  | 2d? | 2008-07-17 | 2008-07-18 |  | 65d |  |  | 12h |
| 188 | 12.4.1 | Update project versions |  | 1d? | 2008-07-17 | 2008-07-17 | 184 | 65d |  | Scott Oster [50%] | 4h |
| 189 | 12.4.2 | update eclipse projects |  | 1d? | 2008-07-18 | 2008-07-18 | 184 | 75.36d |  | Scott Oster [50%] | 4h |
| 190 | 12.4.3 | remove any projects which wont be released in 1.3 |  | 1d? | 2008-07-18 | 2008-07-18 | 184 | 75.36d |  | Scott Oster [50%] | 4h |
| 191 | 12.5 | Update LICENSE |  | 1d? | 2008-07-17 | 2008-07-17 | 184 | 65.86d |  | John Eisenschmidt | 8h |
| 192 | 12.6 | Update core caGrid Services using Introduce 1.3 |  | 0.86d? | 2008-10-17 | 2008-10-17 | 131, 188 | 0d |  | Shannon Hastings [80%]; Steve Langella [80%]; Scott Oster [50%]; David Ervin [80%] | 20h |
| 193 | 12.7 | Validate core services' metadata |  | 2d? | 2008-07-17 | 2008-07-18 | 184 | 74.36d |  | Shannon Hastings [80%]; Steve Langella [80%]; Scott Oster [50%]; David Ervin [80%] | 23.2h |
| 194 | 12.8 | publish release IVY repositories |  | 3d? | 2008-07-18 | 2008-07-22 | 184 | 72.36d |  | Scott Oster [50%] | 12h |
| 195 | 12.9 | create installer release |  | 2d? | 2008-10-17 | 2008-10-21 | 191, 192 | 0d |  | Scott Oster [50%] | 8h |
| 196 | 12.10 | post installer properties file to FTP site |  | 2d? | 2008-07-17 | 2008-07-18 | 184 | 75.36d |  | Scott Oster [50%]; Systems | 12h |
| 197 | 12.11 | create gforge release |  | 2d? | 2008-07-18 | 2008-07-21 | 184 | 73.36d |  | Scott Oster [50%] | 8h |
| 198 | 12.12 | Write Deployment Instructions |  | 1.92d? | 2008-07-18 | 2008-07-21 | 184 | 74.44d |  | Steve Langella [80%]; Scott Oster [50%] | 20h |
| 199 | 12.13 | Redeploy QA Grid |  | 2.5d? | 2008-10-21 | 2008-10-24 | 195 | 0d |  | Quality Assurance | 20h |
| 200 | 12.14 | Redeploy Training Grid |  | 1.92d? | 2008-10-21 | 2008-10-23 | 195 | 5.58d |  | Steve Langella [80%]; Scott Oster [50%] | 20h |
| 201 | 12.15 | Redeploy Staging Grid |  | 2.5d? | 2008-10-24 | 2008-10-28 | 199 | 0d |  | Systems | 20h |
| 202 | 12.16 | Redeploy Production Grid |  | 2.5d? | 2008-10-28 | 2008-10-31 | 201 | 0d |  | Systems | 20h |
| 203 | 12.17 | Update Zope / Plome |  | 1d? | 2008-07-17 | 2008-07-17 | 184 | 75.36d |  | John Eisenschmidt | 8h |
| 204 | 12.18 | Update gforge |  | 1d? | 2008-07-17 | 2008-07-17 | 184 | 75.36d |  | John Eisenschmidt | 8h |
| 205 | 12.19 | Send Release Announcement |  | 1d? | 2008-10-31 | 2008-11-03 | 202, 203, 204, 200, 197, 193, 194 | 0d |  | John Eisenschmidt | 8h |
| 206 | 12.20 | Finish | milestone | 0d | 2008-11-03 | 2008-11-03 | 205 | 0d |  |  |  |

Notes:
- 200: In the past, we have deployed the training grid before other tiers, as we develop the deployment process document in doing so
